# ЭПИ

Schedule from MS Project, 2022-03-01 to 2022-08-26, status date 2022-05-13, costs in ₽, A marks actual dates.
Команда разработчиков из 16 человек занимается созданием карты / города на основе собственного модуля отображения. Проект должен быть завершен в течение 6 месяцев. Бюджет проекта: 50 000 рублей

## Calendars

- Стандартный: Mon-Fri 09:00-13:00, 14:00-18:00; Sat-Sun off. Exceptions (off unless hours are given): 2022-03-07 to 2022-03-08 (8 марта), 2022-05-01 to 2022-05-03 (1 мая), 2022-05-09 to 2022-05-10 (9 мая), 2022-06-12 to 2022-06-13 (День России).

## Resources

| Resource | Group | Rate | Cost per use |
| --- | --- | --- | --- |
| Ведущий программист | Программирование | 10 | 100 |
| Программист#1 | Программирование | 7 | 50 |
| Программист#2 | Программирование | 7.7 | 50 |
| Программист#3 | Программирование | 7.7 | 50 |
| Программист#4 | Программирование | 7.7 | 50 |
| Системный аналитик | Анализ | 20 | 300 |
| Художник-дизайнер | Дизайн | 8 | 70 |
| Технический писатель | Документация | 5 | 20 |
| Web-дизайнер | Internet | 7 | 50 |
| 3D аниматор | Дизайн | 9.2 | 70 |
| Мультимедиа-корреспондент | М-медиа | 3 | 20 |
| Наборщик данных#1 | Ввод данных | 2 | 10 |
| Наборщик данных#2 | Ввод данных | 2 | 10 |
| Наборщик данных#3 | Ввод данных | 2 | 10 |
| Наборщик данных#4 | Ввод данных | 2 | 10 |
| Наборщик данных#5 | Ввод данных | 2 | 10 |
| Сервер | Оборудование |  |  |
| Стажер-программист#1 |  | 1 | 5 |
| Стажер-программист#2 |  | 1 | 5 |
| Стажер-программист#3 |  | 1 | 5 |

## Schedule

| ID | WBS | Task | Type | Duration | Start | Finish | Complete | Remaining | Baseline start | Baseline finish | Baseline duration | Total slack | Constraint | Resources | Work | Actual work | Cost | Baseline cost | Actual cost |
| --- | --- | --- | --- | --- | --- | --- | --- | --- | --- | --- | --- | --- | --- | --- | --- | --- | --- | --- | --- |
| 1 | 1 | **ЭПИ** |  | 121.55d | 2022-03-01 09:00 A | 2022-08-26 14:25 | 41% | 71.81d | 2022-03-01 09:00 | 2022-08-02 09:54 | 103.11d | 0d |  |  | 9417.35h | 2625.66h | 45,635.77 | 49,238.72 | 17,984.3 |
| 2 | 1.1 | **Совещание** |  | 118.12d | 2022-03-02 09:00 A | 2022-08-24 10:00 | 42% | 68.15d | 2022-03-02 09:00 | 2022-07-27 10:00 | 98.12d | 0d |  |  | 154h | 77h | 1,342 | 1,342 | 671 |
| 3 | 1.1.1 | Совещание 1 | manual | 1h | 2022-03-02 09:00 A | 2022-03-02 10:00 A | 100% |  | 2022-03-02 09:00 | 2022-03-02 10:00 | 1h |  | start no earlier than 2022-03-02 09:00 | 3D аниматор; Web-дизайнер; Ведущий программист; Мультимедиа-корреспондент; Системный аналитик; Технический писатель; Художник-дизайнер | 7h | 7h | 61 | 61 | 61 |
| 4 | 1.1.2 | Совещание 2 | manual | 1h | 2022-03-09 09:00 A | 2022-03-09 10:00 A | 100% |  | 2022-03-09 09:00 | 2022-03-09 10:00 | 1h |  | start no earlier than 2022-03-09 09:00 | 3D аниматор; Web-дизайнер; Ведущий программист; Мультимедиа-корреспондент; Системный аналитик; Технический писатель; Художник-дизайнер | 7h | 7h | 61 | 61 | 61 |
| 5 | 1.1.3 | Совещание 3 | manual | 1h | 2022-03-16 09:00 A | 2022-03-16 10:00 A | 100% |  | 2022-03-16 09:00 | 2022-03-16 10:00 | 1h |  | start no earlier than 2022-03-16 09:00 | 3D аниматор; Web-дизайнер; Ведущий программист; Мультимедиа-корреспондент; Системный аналитик; Технический писатель; Художник-дизайнер | 7h | 7h | 61 | 61 | 61 |
| 6 | 1.1.4 | Совещание 4 | manual | 1h | 2022-03-23 09:00 A | 2022-03-23 10:00 A | 100% |  | 2022-03-23 09:00 | 2022-03-23 10:00 | 1h |  | start no earlier than 2022-03-23 09:00 | 3D аниматор; Web-дизайнер; Ведущий программист; Мультимедиа-корреспондент; Системный аналитик; Технический писатель; Художник-дизайнер | 7h | 7h | 61 | 61 | 61 |
| 7 | 1.1.5 | Совещание 5 | manual | 1h | 2022-03-30 09:00 A | 2022-03-30 10:00 A | 100% |  | 2022-03-30 09:00 | 2022-03-30 10:00 | 1h |  | start no earlier than 2022-03-30 09:00 | 3D аниматор; Web-дизайнер; Ведущий программист; Мультимедиа-корреспондент; Системный аналитик; Технический писатель; Художник-дизайнер | 7h | 7h | 61 | 61 | 61 |
| 8 | 1.1.6 | Совещание 6 | manual | 1h | 2022-04-06 09:00 A | 2022-04-06 10:00 A | 100% |  | 2022-04-06 09:00 | 2022-04-06 10:00 | 1h |  | start no earlier than 2022-04-06 09:00 | 3D аниматор; Web-дизайнер; Ведущий программист; Мультимедиа-корреспондент; Системный аналитик; Технический писатель; Художник-дизайнер | 7h | 7h | 61 | 61 | 61 |
| 9 | 1.1.7 | Совещание 7 | manual | 1h | 2022-04-13 09:00 A | 2022-04-13 10:00 A | 100% |  | 2022-04-13 09:00 | 2022-04-13 10:00 | 1h |  | start no earlier than 2022-04-13 09:00 | 3D аниматор; Web-дизайнер; Ведущий программист; Мультимедиа-корреспондент; Системный аналитик; Технический писатель; Художник-дизайнер | 7h | 7h | 61 | 61 | 61 |
| 10 | 1.1.8 | Совещание 8 | manual | 1h | 2022-04-20 09:00 A | 2022-04-20 10:00 A | 100% |  | 2022-04-20 09:00 | 2022-04-20 10:00 | 1h |  | start no earlier than 2022-04-20 09:00 | 3D аниматор; Web-дизайнер; Ведущий программист; Мультимедиа-корреспондент; Системный аналитик; Технический писатель; Художник-дизайнер | 7h | 7h | 61 | 61 | 61 |
| 11 | 1.1.9 | Совещание 9 | manual | 1h | 2022-04-27 09:00 A | 2022-04-27 10:00 A | 100% |  | 2022-04-27 09:00 | 2022-04-27 10:00 | 1h |  | start no earlier than 2022-04-27 09:00 | 3D аниматор; Web-дизайнер; Ведущий программист; Мультимедиа-корреспондент; Системный аналитик; Технический писатель; Художник-дизайнер | 7h | 7h | 61 | 61 | 61 |
| 12 | 1.1.10 | Совещание 10 | manual | 1h | 2022-05-04 09:00 A | 2022-05-04 10:00 A | 100% |  | 2022-05-04 09:00 | 2022-05-04 10:00 | 1h |  | start no earlier than 2022-05-04 09:00 | 3D аниматор; Web-дизайнер; Ведущий программист; Мультимедиа-корреспондент; Системный аналитик; Технический писатель; Художник-дизайнер | 7h | 7h | 61 | 61 | 61 |
| 13 | 1.1.11 | Совещание 11 | manual | 1h | 2022-05-11 09:00 A | 2022-05-11 10:00 A | 100% |  | 2022-05-11 09:00 | 2022-05-11 10:00 | 1h |  | start no earlier than 2022-05-11 09:00 | 3D аниматор; Web-дизайнер; Ведущий программист; Мультимедиа-корреспондент; Системный аналитик; Технический писатель; Художник-дизайнер | 7h | 7h | 61 | 61 | 61 |
| 14 | 1.1.12 | Совещание 12 | manual | 1h | 2022-05-18 09:00 | 2022-05-18 10:00 |  |  | 2022-05-18 09:00 | 2022-05-18 10:00 | 1h |  | start no earlier than 2022-05-18 09:00 | 3D аниматор; Web-дизайнер; Ведущий программист; Мультимедиа-корреспондент; Системный аналитик; Технический писатель; Художник-дизайнер | 7h |  | 61 | 61 |  |
| 15 | 1.1.13 | Совещание 13 | manual | 1h | 2022-05-25 09:00 | 2022-05-25 10:00 |  |  | 2022-05-25 09:00 | 2022-05-25 10:00 | 1h |  | start no earlier than 2022-05-25 09:00 | 3D аниматор; Web-дизайнер; Ведущий программист; Мультимедиа-корреспондент; Системный аналитик; Технический писатель; Художник-дизайнер | 7h |  | 61 | 61 |  |
| 16 | 1.1.14 | Совещание 14 | manual | 1h | 2022-06-01 09:00 | 2022-06-01 10:00 |  |  | 2022-06-01 09:00 | 2022-06-01 10:00 | 1h |  | start no earlier than 2022-06-01 09:00 | 3D аниматор; Web-дизайнер; Ведущий программист; Мультимедиа-корреспондент; Системный аналитик; Технический писатель; Художник-дизайнер | 7h |  | 61 | 61 |  |
| 17 | 1.1.15 | Совещание 15 | manual | 1h | 2022-06-08 09:00 | 2022-06-08 10:00 |  |  | 2022-06-08 09:00 | 2022-06-08 10:00 | 1h |  | start no earlier than 2022-06-08 09:00 | 3D аниматор; Web-дизайнер; Ведущий программист; Мультимедиа-корреспондент; Системный аналитик; Технический писатель; Художник-дизайнер | 7h |  | 61 | 61 |  |
| 18 | 1.1.16 | Совещание 16 | manual | 1h | 2022-06-15 09:00 | 2022-06-15 10:00 |  |  | 2022-06-15 09:00 | 2022-06-15 10:00 | 1h |  | start no earlier than 2022-06-15 09:00 | 3D аниматор; Web-дизайнер; Ведущий программист; Мультимедиа-корреспондент; Системный аналитик; Технический писатель; Художник-дизайнер | 7h |  | 61 | 61 |  |
| 19 | 1.1.17 | Совещание 17 | manual | 1h | 2022-06-22 09:00 | 2022-06-22 10:00 |  |  | 2022-06-22 09:00 | 2022-06-22 10:00 | 1h |  | start no earlier than 2022-06-22 09:00 | 3D аниматор; Web-дизайнер; Ведущий программист; Мультимедиа-корреспондент; Системный аналитик; Технический писатель; Художник-дизайнер | 7h |  | 61 | 61 |  |
| 20 | 1.1.18 | Совещание 18 | manual | 1h | 2022-06-29 09:00 | 2022-06-29 10:00 |  |  | 2022-06-29 09:00 | 2022-06-29 10:00 | 1h |  | start no earlier than 2022-06-29 09:00 | 3D аниматор; Web-дизайнер; Ведущий программист; Мультимедиа-корреспондент; Системный аналитик; Технический писатель; Художник-дизайнер | 7h |  | 61 | 61 |  |
| 21 | 1.1.19 | Совещание 19 | manual | 1h | 2022-07-06 09:00 | 2022-07-06 10:00 |  |  | 2022-07-06 09:00 | 2022-07-06 10:00 | 1h |  | start no earlier than 2022-07-06 09:00 | 3D аниматор; Web-дизайнер; Ведущий программист; Мультимедиа-корреспондент; Системный аналитик; Технический писатель; Художник-дизайнер | 7h |  | 61 | 61 |  |
| 22 | 1.1.20 | Совещание 20 | manual | 1h | 2022-07-13 09:00 | 2022-07-13 10:00 |  |  | 2022-07-13 09:00 | 2022-07-13 10:00 | 1h |  | start no earlier than 2022-07-13 09:00 | 3D аниматор; Web-дизайнер; Ведущий программист; Мультимедиа-корреспондент; Системный аналитик; Технический писатель; Художник-дизайнер | 7h |  | 61 | 61 |  |
| 23 | 1.1.21 | Совещание 21 | manual | 1h | 2022-07-20 09:00 | 2022-07-20 10:00 |  |  | 2022-07-20 09:00 | 2022-07-20 10:00 | 1h |  | start no earlier than 2022-07-20 09:00 | 3D аниматор; Web-дизайнер; Ведущий программист; Мультимедиа-корреспондент; Системный аналитик; Технический писатель; Художник-дизайнер | 7h |  | 61 | 61 |  |
| 24 | 1.1.22 | Совещание 22 | manual | 1h | 2022-07-27 09:00 | 2022-07-27 10:00 |  |  | 2022-07-27 09:00 | 2022-07-27 10:00 | 1h |  | start no earlier than 2022-07-27 09:00 | 3D аниматор; Web-дизайнер; Ведущий программист; Мультимедиа-корреспондент; Системный аналитик; Технический писатель; Художник-дизайнер | 7h |  | 61 | 61 |  |
| 25 | 1.1.23 | Совещание 23 | manual | 1h | 2022-08-03 09:00 | 2022-08-03 10:00 |  |  |  |  |  |  | start no earlier than 2022-08-03 09:00 |  |  |  |  |  |  |
| 26 | 1.1.24 | Совещание 24 | manual | 1h | 2022-08-10 09:00 | 2022-08-10 10:00 |  |  |  |  |  |  | start no earlier than 2022-08-10 09:00 |  |  |  |  |  |  |
| 27 | 1.1.25 | Совещание 25 | manual | 1h | 2022-08-17 09:00 | 2022-08-17 10:00 |  |  |  |  |  |  | start no earlier than 2022-08-17 09:00 |  |  |  |  |  |  |
| 28 | 1.1.26 | Совещание 26 | manual | 1h | 2022-08-24 09:00 | 2022-08-24 10:00 |  |  |  |  |  |  | start no earlier than 2022-08-24 09:00 |  |  |  |  |  |  |
| 29 | 1.2 | Начало проекта | milestone | 0w | 2022-03-01 09:00 A | 2022-03-01 09:00 A | 100% |  | 2022-03-01 09:00 | 2022-03-01 09:00 | 0w |  |  |  |  |  |  |  |  |

| ID | WBS | Task | Type | Duration | Start | Finish | Predecessors | Complete | Remaining | Baseline start | Baseline finish | Baseline duration | Total slack | Free slack | Constraint | Resources | Work | Actual work | Cost | Baseline cost | Actual cost |
| --- | --- | --- | --- | --- | --- | --- | --- | --- | --- | --- | --- | --- | --- | --- | --- | --- | --- | --- | --- | --- | --- |
| 30 | 1.3 | **Создание интерфейса** |  | 106d | 2022-03-01 09:00 A | 2022-08-04 18:00 | 29 | 85% | 15.86d | 2022-03-01 09:00 | 2022-06-30 11:37 | 80.33d | 0d |  |  |  | 500h | 320h | 5,382.8 | 5,650 | 3,822.8 |
| 31 | 1.3.1 | **Разработка дизайна интерфейса** |  | 28.38d | 2022-03-01 09:00 A | 2022-04-12 12:00 A |  | 100% |  | 2022-03-01 09:00 | 2022-04-07 16:00 | 25.75d |  |  |  |  | 320h | 320h | 2,972.8 | 2,770 | 2,972.8 |
| 32 | 1.3.1.1 | Разработка 2D графических элементов |  | 3w | 2022-03-01 09:00 A | 2022-03-24 13:00 A |  | 100% |  | 2022-03-01 09:00 | 2022-03-24 13:00 | 3w |  |  |  | Художник-дизайнер | 120h | 120h | 1,030 | 1,030 | 1,030 |
| 33 | 1.3.1.2 | Разработка 3D графических элементов |  | 2.52w | 2022-03-01 09:00 A | 2022-03-21 18:00 A | 32SS | 100% |  | 2022-03-01 09:00 | 2022-03-17 12:00 | 2w |  |  |  | 3D аниматор | 80h | 80h | 768.8 | 710 | 768.8 |
| 34 | 1.3.1.3 | Создание заставки |  | 3w | 2022-03-22 09:00 A | 2022-04-12 12:00 A | 33 | 100% |  | 2022-03-17 12:00 | 2022-04-07 16:00 | 3w |  |  |  | 3D аниматор | 120h | 120h | 1,174 | 1,030 | 1,174 |
| 35 | 1.3.2 | Программирование интерфейса |  | 1.5w | 2022-07-26 14:00 | 2022-08-04 18:00 | 31, 40 |  |  | 2022-06-20 16:37 | 2022-06-30 11:37 | 1.5w | 0d |  | finish no earlier than 2022-08-04 18:00 | Программист#3; Программист#4; Программист#1; Программист#2 | 180h |  | 1,410 | 1,880 |  |
| 36 | 1.4 | **Построение базы объектов** |  | 84.42d | 2022-03-28 14:39 A | 2022-07-29 18:00 |  | 36% | 53.63d | 2022-03-24 14:00 | 2022-07-28 16:00 | 85.25d | 19.55d |  |  | Сервер | 5675.35h | 1637.83h | 13,378.69 | 15,582 | 6,178.69 |
| 37 | 1.4.1 | Анализ и построение структуры базы объектов |  | 2w | 2022-03-28 14:39 A | 2022-04-18 14:45 A |  | 100% |  | 2022-03-24 14:00 | 2022-04-07 16:00 | 2w |  |  |  | Системный аналитик | 80h | 80h | 1,900 | 1,900 | 1,900 |
| 38 | 1.4.2 | Программирование средств обработки базы объектов |  | 3w | 2022-04-18 14:45 A | 2022-05-01 17:45 A | 37 | 100% |  | 2022-04-07 16:00 | 2022-04-28 16:00 | 3w |  |  |  | Программист#3; Программист#4 | 240h | 240h | 1,948 | 1,780 | 1,948 |
| 39 | 1.4.3 | Наполнение базы объектов |  | 12w | 2022-05-04 09:00 A | 2022-07-29 18:00 | 38 | 10% | 10.8w | 2022-04-28 16:00 | 2022-07-28 16:00 | 12w | 19.55d |  |  | Наборщик данных#1; Наборщик данных#2; Наборщик данных#3; Наборщик данных#4; Наборщик данных#5 | 2400h | 240h | 4,850 | 4,850 | 530 |
| 40 | 1.5 | **Создание ядра GIS** |  | 97.84d | 2022-03-01 09:00 A | 2022-07-25 16:44 |  | 47% | 51.71d | 2022-03-01 09:00 | 2022-06-20 16:37 | 72.83d | 0.66d |  |  |  | 1880h | 494.83h | 18,442.87 | 18,442.87 | 7,003.81 |
| 41 | 1.5.1 | Анализ и проектирование ядра |  | 3.27w | 2022-03-01 09:00 A | 2022-03-28 10:10 A |  | 100% |  | 2022-03-01 09:00 | 2022-03-24 13:00 | 3w |  |  |  | Ведущий программист; Системный аналитик | 240h | 240h | 4,000 | 4,000 | 4,000 |
| 42 | 1.5.2 | Создание модели ядра |  | 9.25w | 2022-03-28 10:10 A | 2022-06-09 10:10 | 41 | 61% | 3.63w | 2022-03-24 14:00 | 2022-04-29 10:00 | 5.12w | 0.66d | 0d |  | Ведущий программист; Программист#1 | 400h | 254.83h | 3,550 | 3,550 | 2,533.81 |
| 43 | 1.5.3 | Тестирование модели ядра |  | 0.25w | 2022-06-09 10:10 | 2022-06-10 12:10 | 42 |  |  | 2022-04-29 10:00 | 2022-05-04 12:00 | 0.25w | 0.66d | 0d |  | Программист#1; Программист#2; Программист#3; Программист#4 | 40h |  | 480 | 480 |  |
| 44 | 1.5.4 | Создание рабочей версии ядра |  | 6.09w | 2022-06-10 12:10 | 2022-07-25 16:44 | 43 |  |  | 2022-05-04 12:00 | 2022-06-20 16:37 | 6.09w | 0.66d |  |  | Ведущий программист; Программист#1; Программист#2; Программист#3; Программист#4 | 1200h |  | 9,412.87 | 9,412.87 |  |
| 45 | 1.6 | Создание мультимедиа – наполнения |  | 6w | 2022-04-12 12:00 A | 2022-05-31 10:00 | 31 | 40% | 3.6w | 2022-04-07 16:00 | 2022-05-26 15:00 | 6w | 62.43d |  |  | Мультимедиа-корреспондент | 240h | 96h | 740 | 740 | 308 |
| 46 | 1.7 | Создание справочной системы |  | 2w | 2022-08-05 09:00 | 2022-08-18 18:00 | 35 |  |  | 2022-07-11 15:37 | 2022-07-25 17:37 | 2w | 5.55d |  |  | Технический писатель | 80h |  | 420 | 420 |  |
| 47 | 1.8 | **Создание руководства пользователя** |  | 17d | 2022-07-22 09:00 | 2022-08-15 18:00 | 35FS-10d |  |  | 2022-06-16 11:37 | 2022-07-11 15:37 | 17.38d | 0d |  |  |  | 160h |  | 1,010 | 1,010 |  |
| 48 | 1.8.1 | Разработка дизайна руководства |  | 1w | 2022-07-22 09:00 | 2022-07-28 18:00 |  |  |  | 2022-06-16 11:37 | 2022-06-23 12:37 | 1w | 0d |  |  | Художник-дизайнер | 40h |  | 390 | 390 |  |
| 49 | 1.8.2 | Написание руководства пользователя |  | 3w | 2022-07-26 09:00 | 2022-08-15 18:00 | 48SS+2d |  |  | 2022-06-20 11:37 | 2022-07-11 15:37 | 3w | 0d |  |  | Технический писатель | 120h |  | 620 | 620 |  |
| 50 | 1.9 | **Создание web – сайта и поддержка** |  | 21d | 2022-07-26 09:00 | 2022-08-23 18:00 |  |  |  | 2022-06-20 11:37 | 2022-07-21 17:37 | 23.62d | 0d |  |  |  | 248h |  | 2,154 | 2,106 |  |
| 51 | 1.9.1 | Разработка структуры сайта |  | 1d | 2022-07-26 09:00 | 2022-07-26 18:00 | 49SS |  |  | 2022-06-20 11:37 | 2022-06-21 11:37 | 1d | 0d |  |  | Web-дизайнер | 8h |  | 106 | 106 |  |
| 52 | 1.9.2 | Разработка дизайна сайта |  | 1w | 2022-07-27 09:00 | 2022-08-02 18:00 | 51 |  |  | 2022-06-21 11:37 | 2022-06-30 14:37 | 1.4w | 0d |  |  | 3D аниматор; Web-дизайнер; Художник-дизайнер | 120h |  | 1,158 | 1,110 |  |
| 53 | 1.9.3 | Наполнение сайта |  | 3w | 2022-08-03 09:00 | 2022-08-23 18:00 | 52 |  |  | 2022-06-30 14:37 | 2022-07-21 17:37 | 3w | 0d |  |  | Web-дизайнер | 120h |  | 890 | 890 |  |
| 54 | 1.10 | Тестирование сайта |  | 1.51w | 2022-08-17 09:00 | 2022-08-26 14:25 | 50FS-1w |  |  | 2022-07-14 17:37 | 2022-08-02 09:54 | 2.43w | 0d |  |  | Ведущий программист; Программист#1; Программист#2; Программист#3; Программист#4; Стажер-программист#1; Стажер-программист#2; Стажер-программист#3 | 480h |  | 2,765.4 | 3,945.85 |  |
| 55 | 1.11 | Сдача сайта в эксплуатацию | milestone | 0w | 2022-08-26 14:25 | 2022-08-26 14:25 | 54 |  |  | 2022-08-02 09:54 | 2022-08-02 09:54 | 0w | 0d |  |  |  |  |  |  |  |  |
