# Альтернативное планирование

Schedule from MS Project, 2022-03-01 to 2022-08-26, status date 2022-05-06, costs in ₽, A marks actual dates.
Команда разработчиков из 16 человек занимается созданием карты города на основе собственного модуля отображения. проект должен быть завершен в течение 6 месяцев. Бюджет проекта: 50 000 рублей.

## Calendars

- Стандартный: Mon-Fri 09:00-13:00, 14:00-18:00; Sat-Sun off. Exceptions (off unless hours are given): 2022-03-06 to 2022-03-08 (Международный Женский День), 2022-05-01 to 2022-05-03 (День Труда), 2022-05-07 to 2022-05-10 (Праздник Великой Победы), 2022-06-13 (День России).

## Resources

| Resource | Group | Rate | Cost per use |
| --- | --- | --- | --- |
| Ведущий программист | Программирование | 10 | 100 |
| Программист#1 | Программирование | 7 | 50 |
| Программист#2 | Программирование | 7 | 50 |
| Программист#3 | Программирование | 7 | 50 |
| Программист#4 | Программирование | 7 | 50 |
| Системный аналитик | Анализ | 20 | 300 |
| Художник-дизайнер | Дизайн | 8 | 70 |
| Технический писатель | Документация | 5 | 20 |
| Web-дизайнер | Internet | 7 | 50 |
| 3D аниматор | Дизайн | 8 | 70 |
| Мультимедиа-корреспондент | М-медиа | 3 | 20 |
| Наборщик данных#1 | Ввод данных | 2 | 10 |
| Наборщик данных#2 | Ввод данных | 2 | 10 |
| Наборщик данных#3 | Ввод данных | 2 | 10 |
| Наборщик данных#4 | Ввод данных | 2 | 10 |
| Наборщик данных#5 | Ввод данных | 2 | 10 |
| Дополнительный сервер |  | 2 |  |
| Стажер-тестировщик #1 |  | 1 | 5 |
| Стажер-тестировщик #2 |  | 1 | 5 |
| Стажер-тестировщик #3 |  | 1 | 5 |

## Schedule

| ID | WBS | Task | Type | Duration | Start | Finish | Predecessors | Complete | Remaining | Baseline start | Baseline finish | Baseline duration | Total slack | Free slack | Resources | Work | Actual work | Cost | Baseline cost | Actual cost |
| --- | --- | --- | --- | --- | --- | --- | --- | --- | --- | --- | --- | --- | --- | --- | --- | --- | --- | --- | --- | --- |
| 1 | 1 | Начало проекта | milestone | 0w | 2022-03-01 09:00 A | 2022-03-01 09:00 A |  | 100% |  | 2022-03-01 09:00 | 2022-03-01 09:00 | 0w |  |  |  |  |  |  |  |  |
| 2 | 2 | **Дизайн** |  | 79.75d | 2022-03-01 09:00 | 2022-06-29 16:00 |  |  |  |  |  |  | 1.12d |  |  | 448h |  | 3,972 |  |  |
| 3 | 2.1 | **Разработка дизайна интерфейса** |  | 53.17d | 2022-03-01 09:00 | 2022-05-23 10:20 |  |  |  | 2022-03-01 09:00 | 2022-04-08 10:00 | 26.12d | 10.06d | 0d |  | 288h |  | 2,472 | 2,770 |  |
| 4 | 2.1.1 | Разработка 2D графических элементов |  | 3w | 2022-03-01 09:00 | 2022-04-22 17:00 |  |  |  | 2022-03-01 09:00 | 2022-03-24 13:00 | 3w | 10.06d | 0d | Художник-дизайнер | 120h |  | 1,030 | 1,030 |  |
| 5 | 2.1.2 | Разработка 3D графических элементов |  | 2w | 2022-03-01 09:00 | 2022-04-22 16:20 | 4SS |  |  | 2022-03-01 09:00 | 2022-03-17 12:00 | 2w | 10.06d | 0d | 3D аниматор | 120h |  | 1,030 | 710 |  |
| 6 | 2.1.3 | Создание заставки |  | 3w | 2022-04-22 16:20 | 2022-05-23 10:20 | 5 |  |  | 2022-03-17 14:00 | 2022-04-08 10:00 | 3w | 10.06d |  | 3D аниматор [40%] | 48h |  | 412 | 1,030 |  |
| 7 | 2.2 | Разработка дизайна руководства |  | 1w | 2022-04-22 17:00 | 2022-06-29 16:00 | 8, 4 |  |  | 2022-07-01 14:05 | 2022-07-08 16:05 | 1w | 12.81d | 0d | Художник-дизайнер | 40h |  | 390 | 390 |  |
| 8 | 2.3 | Разработка дизайна сайта |  | 1.15w | 2022-03-02 10:00 | 2022-03-11 18:00 | 16 |  |  | 2022-07-06 15:05 | 2022-07-18 09:05 | 1.45w | 0d |  | 3D аниматор; Web-дизайнер; Художник-дизайнер | 120h |  | 1,110 | 1,110 |  |
| 9 | 3 | **Программирование** |  | 97.63d | 2022-03-24 14:00 A | 2022-08-16 10:03 |  | 27% | 70.96d |  |  |  | 8.05d |  |  | 4123.55h | 883.55h | 31,372.83 |  | 6,792.83 |
| 10 | 3.1 | Программирование средств обработки базы объектов |  | 3.6w | 2022-04-12 09:00 A | 2022-05-11 17:49 A | 19 | 100% |  | 2022-04-08 17:49 | 2022-04-29 17:49 | 3w |  |  | Программист#3; Дополнительный сервер | 152h | 152h | 514 | 1,780 | 514 |
| 11 | 3.2 | Программирование интерфейса |  | 3w | 2022-07-22 10:00 | 2022-08-12 10:00 | 3 |  |  | 2022-06-24 14:05 | 2022-07-15 14:05 | 3w | 10.06d |  | Программист#3; Программист#4 | 240h |  | 1,780 | 1,780 |  |
| 12 | 3.3 | Создание модели ядра |  | 8.93w | 2022-03-24 14:00 A | 2022-06-03 09:03 | 15 | 25% | 6.69w | 2022-03-24 14:00 | 2022-04-07 17:49 | 2.1w | 59.18d |  | Ведущий программист; Программист#1; Программист#2; Программист#3; Программист#4 | 1400h | 400h | 10,936.46 | 3,336.46 | 3,336.46 |
| 13 | 3.4 | Создание рабочей версии ядра |  | 13.4w | 2022-04-14 17:49 A | 2022-08-16 10:03 | 23 | 15% | 11.33w | 2022-04-14 17:49 | 2022-06-24 14:05 | 9.11w | 8.05d |  | Ведущий программист; Программист#1; Программист#2; Программист#3; Программист#4 | 2331.55h | 331.55h | 18,142.37 | 9,411.45 | 2,942.37 |
| 14 | 4 | **Проектирование** |  | 17d | 2022-03-01 09:00 A | 2022-03-27 22:00 |  | 58% | 7.19d |  |  |  | 9.78d |  |  | 340h | 172h | 4,806 |  | 2,300 |
| 15 | 4.1 | Анализ и проектирование ядра |  | 3w | 2022-03-01 09:00 A | 2022-03-23 18:00 |  | 33% | 2w | 2022-03-01 09:00 | 2022-03-24 13:00 | 3w | 11.78d | 0.5d | Ведущий программист; Системный аналитик | 240h | 80h | 4,000 | 4,000 | 1,600 |
| 16 | 4.2 | Разработка структуры сайта |  | 1d | 2022-03-01 09:00 | 2022-03-01 18:00 |  |  |  | 2022-07-05 14:05 | 2022-07-06 15:05 | 1d | 0d |  | Web-дизайнер | 8h |  | 106 | 106 |  |
| 17 | 4.3 | Анализ и построение структуры базы объектов |  | 2w | 2022-03-24 14:00 A | 2022-03-27 22:00 A | 15 | 100% |  | 2022-03-24 14:00 | 2022-04-07 16:00 | 2w |  |  | Системный аналитик; Дополнительный сервер | 92h | 92h | 700 | 1,900 | 700 |
| 18 | 5 | **Работа с данными** |  | 50d | 2022-03-14 09:00 A | 2022-05-26 18:00 |  | 22% | 39.16d |  |  |  | 64.18d |  |  | 1399.73h | 239.73h | 3,892.45 |  | 682.45 |
| 19 | 5.1 | Наполнение базы объектов |  | 12.03w | 2022-04-29 17:49 A | 2022-05-24 17:48 | 17FS-1w | 8% | 11.04w | 2022-04-29 17:49 | 2022-07-29 17:49 | 12w | 66.21d |  | Наборщик данных#1; Наборщик данных#2; Наборщик данных#3; Наборщик данных#4; Дополнительный сервер | 896.73h | 96.73h | 1,833.45 | 4,850 | 233.45 |
| 20 | 5.2 | Создание мультимедиа-наполнения |  | 6w | 2022-04-08 10:00 A | 2022-05-26 18:00 |  | 60% | 2.42w | 2022-04-08 10:00 | 2022-05-27 16:00 | 6w | 64.18d |  | Мультимедиа-корреспондент | 383h | 143h | 1,169 | 740 | 449 |
| 21 | 5.3 | Наполнение сайта |  | 3w | 2022-03-14 09:00 | 2022-04-04 13:00 | 8 |  |  | 2022-07-18 09:05 | 2022-08-08 15:00 | 3w | 0d |  | Web-дизайнер | 120h |  | 890 | 890 |  |
| 22 | 6 | **Тестирование** |  | 108.68d | 2022-03-21 14:00 A | 2022-08-26 10:28 |  | 9% | 98.84d |  |  |  | 0d |  |  | 680h | 40h | 6,299.17 |  | 1,130 |
| 23 | 6.1 | Тестирование модели ядра |  | 1w | 2022-04-07 17:49 A | 2022-05-12 10:00 A | 12 | 100% |  | 2022-04-07 17:49 | 2022-04-14 17:49 | 1w |  |  | Программист#1 | 40h | 40h | 1,130 | 330 | 1,130 |
| 24 | 6.2 | Тестирование сайта |  | 10.04w | 2022-03-21 14:00 | 2022-08-26 10:28 | 21FS-2w |  |  | 2022-08-01 15:00 | 2022-08-30 15:00 | 4.2w | 0d |  | Ведущий программист; Программист#1; Программист#2 | 640h |  | 5,169.17 | 4,040 |  |

| ID | WBS | Task | Type | Duration | Start | Finish | Predecessors | Baseline start | Baseline finish | Baseline duration | Total slack | Free slack | Constraint | Resources | Work | Cost | Baseline cost |
| --- | --- | --- | --- | --- | --- | --- | --- | --- | --- | --- | --- | --- | --- | --- | --- | --- | --- |
| 25 | 7 | **Документирование** |  | 28.62d | 2022-06-29 16:00 | 2022-08-09 12:00 |  |  |  |  | 12.81d |  |  |  | 200h | 1,040 |  |
| 26 | 7.1 | Создание справочной системы |  | 2w | 2022-07-22 16:00 | 2022-08-09 12:00 | 27 | 2022-07-27 12:05 | 2022-08-10 17:05 | 2w | 12.81d |  |  | Технический писатель | 80h | 420 | 420 |
| 27 | 7.2 | Написание руководства пользователя |  | 3w | 2022-06-29 16:00 | 2022-07-22 16:00 | 7 | 2022-07-05 14:05 | 2022-07-27 12:05 | 3w | 12.81d | 0d |  | Технический писатель | 120h | 620 | 620 |
| 28 | 8 | **Совещание** |  | 120.18d | 2022-03-02 09:00 | 2022-08-26 10:28 |  | 2022-03-02 09:00 | 2022-08-24 10:00 | 118.12d | 0d |  |  |  | 175h | 1,525 | 1,586 |
| 29 | 8.1 | Еженедельное совещание 1 |  | 1h | 2022-03-02 09:00 | 2022-03-02 10:00 |  | 2022-03-02 09:00 | 2022-03-02 10:00 | 1h | 120.06d |  | start no earlier than 2022-03-02 09:00 | 3D аниматор; Web-дизайнер; Ведущий программист; Мультимедиа-корреспондент; Системный аналитик; Технический писатель; Художник-дизайнер | 7h | 61 | 61 |
| 30 | 8.2 | Еженедельное совещание 2 |  | 1h | 2022-03-09 09:00 | 2022-03-09 10:00 |  | 2022-03-09 09:00 | 2022-03-09 10:00 | 1h | 117.06d |  | start no earlier than 2022-03-09 09:00 | 3D аниматор; Web-дизайнер; Ведущий программист; Мультимедиа-корреспондент; Системный аналитик; Технический писатель; Художник-дизайнер | 7h | 61 | 61 |
| 31 | 8.3 | Еженедельное совещание 3 |  | 1h | 2022-03-16 09:00 | 2022-03-16 10:00 |  | 2022-03-16 09:00 | 2022-03-16 10:00 | 1h | 112.06d |  | start no earlier than 2022-03-16 09:00 | 3D аниматор; Web-дизайнер; Ведущий программист; Мультимедиа-корреспондент; Системный аналитик; Технический писатель; Художник-дизайнер | 7h | 61 | 61 |
| 32 | 8.4 | Еженедельное совещание 4 |  | 1h | 2022-03-23 09:00 | 2022-03-23 10:00 |  | 2022-03-23 09:00 | 2022-03-23 10:00 | 1h | 107.06d |  | start no earlier than 2022-03-23 09:00 | 3D аниматор; Web-дизайнер; Ведущий программист; Мультимедиа-корреспондент; Системный аналитик; Технический писатель; Художник-дизайнер | 7h | 61 | 61 |
| 33 | 8.5 | Еженедельное совещание 5 |  | 1h | 2022-03-30 09:00 | 2022-03-30 10:00 |  | 2022-03-30 09:00 | 2022-03-30 10:00 | 1h | 102.06d |  | start no earlier than 2022-03-30 09:00 | 3D аниматор; Web-дизайнер; Ведущий программист; Мультимедиа-корреспондент; Системный аналитик; Технический писатель; Художник-дизайнер | 7h | 61 | 61 |
| 34 | 8.6 | Еженедельное совещание 6 |  | 1h | 2022-04-06 09:00 | 2022-04-06 10:00 |  | 2022-04-06 09:00 | 2022-04-06 10:00 | 1h | 97.06d |  | start no earlier than 2022-04-06 09:00 | 3D аниматор; Web-дизайнер; Ведущий программист; Мультимедиа-корреспондент; Системный аналитик; Технический писатель; Художник-дизайнер | 7h | 61 | 61 |
| 35 | 8.7 | Еженедельное совещание 7 |  | 1h | 2022-04-13 09:00 | 2022-04-13 10:00 |  | 2022-04-13 09:00 | 2022-04-13 10:00 | 1h | 92.06d |  | start no earlier than 2022-04-13 09:00 | 3D аниматор; Web-дизайнер; Ведущий программист; Мультимедиа-корреспондент; Системный аналитик; Технический писатель; Художник-дизайнер | 7h | 61 | 61 |
| 36 | 8.8 | Еженедельное совещание 8 |  | 1h | 2022-04-20 09:00 | 2022-04-20 10:00 |  | 2022-04-20 09:00 | 2022-04-20 10:00 | 1h | 87.06d |  | start no earlier than 2022-04-20 09:00 | 3D аниматор; Web-дизайнер; Ведущий программист; Мультимедиа-корреспондент; Системный аналитик; Технический писатель; Художник-дизайнер | 7h | 61 | 61 |
| 37 | 8.9 | Еженедельное совещание 9 |  | 1h | 2022-04-27 09:00 | 2022-04-27 10:00 |  | 2022-04-27 09:00 | 2022-04-27 10:00 | 1h | 82.06d |  | start no earlier than 2022-04-27 09:00 | 3D аниматор; Web-дизайнер; Ведущий программист; Мультимедиа-корреспондент; Системный аналитик; Технический писатель; Художник-дизайнер | 7h | 61 | 61 |
| 38 | 8.10 | Еженедельное совещание 10 |  | 1h | 2022-05-04 09:00 | 2022-05-04 10:00 |  | 2022-05-04 09:00 | 2022-05-04 10:00 | 1h | 79.06d |  | start no earlier than 2022-05-04 09:00 | 3D аниматор; Web-дизайнер; Ведущий программист; Мультимедиа-корреспондент; Системный аналитик; Технический писатель; Художник-дизайнер | 7h | 61 | 61 |
| 39 | 8.11 | Еженедельное совещание 11 |  | 1h | 2022-05-11 09:00 | 2022-05-11 10:00 |  | 2022-05-11 09:00 | 2022-05-11 10:00 | 1h | 76.06d |  | start no earlier than 2022-05-11 09:00 | 3D аниматор; Web-дизайнер; Ведущий программист; Мультимедиа-корреспондент; Системный аналитик; Технический писатель; Художник-дизайнер | 7h | 61 | 61 |
| 40 | 8.12 | Еженедельное совещание 12 |  | 1h | 2022-05-18 09:00 | 2022-05-18 10:00 |  | 2022-05-18 09:00 | 2022-05-18 10:00 | 1h | 71.06d |  | start no earlier than 2022-05-18 09:00 | 3D аниматор; Web-дизайнер; Ведущий программист; Мультимедиа-корреспондент; Системный аналитик; Технический писатель; Художник-дизайнер | 7h | 61 | 61 |
| 41 | 8.13 | Еженедельное совещание 13 |  | 1h | 2022-05-25 09:00 | 2022-05-25 10:00 |  | 2022-05-25 09:00 | 2022-05-25 10:00 | 1h | 66.06d |  | start no earlier than 2022-05-25 09:00 | 3D аниматор; Web-дизайнер; Ведущий программист; Мультимедиа-корреспондент; Системный аналитик; Технический писатель; Художник-дизайнер | 7h | 61 | 61 |
| 42 | 8.14 | Еженедельное совещание 14 |  | 1h | 2022-06-01 09:00 | 2022-06-01 10:00 |  | 2022-06-01 09:00 | 2022-06-01 10:00 | 1h | 61.06d |  | start no earlier than 2022-06-01 09:00 | 3D аниматор; Web-дизайнер; Ведущий программист; Мультимедиа-корреспондент; Системный аналитик; Технический писатель; Художник-дизайнер | 7h | 61 | 61 |
| 43 | 8.15 | Еженедельное совещание 15 |  | 1h | 2022-06-08 09:00 | 2022-06-08 10:00 |  | 2022-06-08 09:00 | 2022-06-08 10:00 | 1h | 56.06d |  | start no earlier than 2022-06-08 09:00 | 3D аниматор; Web-дизайнер; Ведущий программист; Мультимедиа-корреспондент; Системный аналитик; Технический писатель; Художник-дизайнер | 7h | 61 | 61 |
| 44 | 8.16 | Еженедельное совещание 16 |  | 1h | 2022-06-15 09:00 | 2022-06-15 10:00 |  | 2022-06-15 09:00 | 2022-06-15 10:00 | 1h | 52.06d |  | start no earlier than 2022-06-15 09:00 | 3D аниматор; Web-дизайнер; Ведущий программист; Мультимедиа-корреспондент; Системный аналитик; Технический писатель; Художник-дизайнер | 7h | 61 | 61 |
| 45 | 8.17 | Еженедельное совещание 17 |  | 1h | 2022-06-22 09:00 | 2022-06-22 10:00 |  | 2022-06-22 09:00 | 2022-06-22 10:00 | 1h | 47.06d |  | start no earlier than 2022-06-22 09:00 | 3D аниматор; Web-дизайнер; Ведущий программист; Мультимедиа-корреспондент; Системный аналитик; Технический писатель; Художник-дизайнер | 7h | 61 | 61 |
| 46 | 8.18 | Еженедельное совещание 18 |  | 1h | 2022-06-29 09:00 | 2022-06-29 10:00 |  | 2022-06-29 09:00 | 2022-06-29 10:00 | 1h | 42.06d |  | start no earlier than 2022-06-29 09:00 | 3D аниматор; Web-дизайнер; Ведущий программист; Мультимедиа-корреспондент; Системный аналитик; Технический писатель; Художник-дизайнер | 7h | 61 | 61 |
| 47 | 8.19 | Еженедельное совещание 19 |  | 1h | 2022-07-06 09:00 | 2022-07-06 10:00 |  | 2022-07-06 09:00 | 2022-07-06 10:00 | 1h | 37.06d |  | start no earlier than 2022-07-06 09:00 | 3D аниматор; Web-дизайнер; Ведущий программист; Мультимедиа-корреспондент; Системный аналитик; Технический писатель; Художник-дизайнер | 7h | 61 | 61 |
| 48 | 8.20 | Еженедельное совещание 20 |  | 1h | 2022-07-13 09:00 | 2022-07-13 10:00 |  | 2022-07-13 09:00 | 2022-07-13 10:00 | 1h | 32.06d |  | start no earlier than 2022-07-13 09:00 | 3D аниматор; Web-дизайнер; Ведущий программист; Мультимедиа-корреспондент; Системный аналитик; Технический писатель; Художник-дизайнер | 7h | 61 | 61 |
| 49 | 8.21 | Еженедельное совещание 21 |  | 1h | 2022-07-20 09:00 | 2022-07-20 10:00 |  | 2022-07-20 09:00 | 2022-07-20 10:00 | 1h | 27.06d |  | start no earlier than 2022-07-20 09:00 | 3D аниматор; Web-дизайнер; Ведущий программист; Мультимедиа-корреспондент; Системный аналитик; Технический писатель; Художник-дизайнер | 7h | 61 | 61 |
| 50 | 8.22 | Еженедельное совещание 22 |  | 1h | 2022-07-27 09:00 | 2022-07-27 10:00 |  | 2022-07-27 09:00 | 2022-07-27 10:00 | 1h | 22.06d |  | start no earlier than 2022-07-27 09:00 | 3D аниматор; Web-дизайнер; Ведущий программист; Мультимедиа-корреспондент; Системный аналитик; Технический писатель; Художник-дизайнер | 7h | 61 | 61 |
| 51 | 8.23 | Еженедельное совещание 23 |  | 1h | 2022-08-03 09:00 | 2022-08-03 10:00 |  | 2022-08-03 09:00 | 2022-08-03 10:00 | 1h | 17.06d |  | start no earlier than 2022-08-03 09:00 | 3D аниматор; Web-дизайнер; Ведущий программист; Мультимедиа-корреспондент; Системный аналитик; Технический писатель; Художник-дизайнер | 7h | 61 | 61 |
| 52 | 8.24 | Еженедельное совещание 24 |  | 1h | 2022-08-10 09:00 | 2022-08-10 10:00 |  | 2022-08-10 09:00 | 2022-08-10 10:00 | 1h | 12.06d |  | start no earlier than 2022-08-10 09:00 | 3D аниматор; Web-дизайнер; Ведущий программист; Мультимедиа-корреспондент; Системный аналитик; Технический писатель; Художник-дизайнер | 7h | 61 | 61 |
| 53 | 8.25 | Еженедельное совещание 25 |  | 1h | 2022-08-17 09:00 | 2022-08-17 10:00 |  | 2022-08-17 09:00 | 2022-08-17 10:00 | 1h | 7.06d |  | start no earlier than 2022-08-17 09:00 | 3D аниматор; Web-дизайнер; Ведущий программист; Мультимедиа-корреспондент; Системный аналитик; Технический писатель; Художник-дизайнер | 7h | 61 | 61 |
| 54 | 8.26 | Сдача сайта в эксплуатацию | milestone | 0w | 2022-08-26 10:28 | 2022-08-26 10:28 | 24 | 2022-08-30 15:00 | 2022-08-30 15:00 | 0w | 0d |  |  |  |  |  |  |
| 55 | 9 | Сдача проекта | milestone | 0w | 2022-08-26 10:28 | 2022-08-26 10:28 | 22 |  |  |  | 0d |  |  |  |  |  |  |
